# Projeto Institucional V1.0.0

Schedule from MS Project, 2025-01-01 to 2025-03-13, status date 2025-01-03, costs in R$.

## Calendars

- Padrão: Mon-Fri 07:30-11:30, 12:30-16:45; Sat-Sun off. Exceptions (off unless hours are given): 2025-01-11 to 2025-01-12 (Recesso Empresarial ( Folga )), 2025-02-12 to 2025-02-13 (Carnaval (recesso)), 2025-02-14 14:00-16:00 (Quarta-Feira Cinzas).

## Resources

| Resource | Group | Unit | Rate | Cost per use |
| --- | --- | --- | --- | --- |
| Cenografista | Staff |  | 100 |  |
| Figurinista | Staff |  | 25 |  |
| Maquiador | Staff |  | 12.5 |  |
| Produtor | Staff |  | 18.75 |  |
| Editor | Staff |  | 200 |  |
| Animador (Efeitos Especiais) | Staff |  | 200 |  |
| Roteirista | Staff |  | 37.5 |  |
| Diretor | Staff |  | 37.5 |  |
| Diretor de Fotografia | Staff |  | 25 |  |
| Designer | Staff |  | 100 |  |
| Desenhista | Staff |  | 150 |  |
| Técnico de Áudio | Equipe técnica |  | 150 |  |
| Técnico de Filmagem | Equipe técnica |  | 150 |  |
| Técnico de Iluminação | Equipe técnica |  | 150 |  |
| Cameraman | Equipe técnica |  | 100 |  |
| Iluminador | Equipe técnica |  | 100 |  |
| Operador de Som | Equipe técnica |  | 100 |  |
| Igor Oliveira | Membros da empresa |  | 37.5 |  |
| Gerente de Projetos | Membros da Empresa |  |  |  |
| Artista 1 | Elenco |  | 312.5 |  |
| Artista 2 | Elenco |  | 312.5 |  |
| Artista 3 | Elenco |  | 312.5 |  |
| Artista 4 | Elenco |  | 312.5 |  |
| Serviço de Limpeza | Mão de Obra Terceirizada |  |  |  |
| Projeto Cenografia | Mão de Obra Terceirizada |  |  |  |
| Câmeras | Equipamentos | unid. | 300 |  |
| Microfones | Equipamentos | unid. | 50 |  |
| Cabos | Equipamentos | m. | 15 |  |
| Spots de Luz | Equipamentos | unid. | 150 |  |
| Mesa de Som | Equipamentos | unid. | 200 |  |
| Mesa de Luz | Equipamentos | unid. | 200 |  |
| Gerador | Equipamentos | unid. | 500 | 250 |
| Equipamentos | Orçamento |  |  |  |
| Equipe técnica | Orçamento |  |  |  |
| Prestadores de Serviço | Orçamento |  |  |  |
| Membros da empresa | Orçamento |  |  |  |
| Staff | Orçamento |  |  |  |
| Elenco | Orçamento |  |  |  |

## Schedule

| ID | WBS | Task | Type | Duration | Start | Finish | Predecessors | Total slack | Free slack | Constraint | Deadline | Resources | Work | Cost |
| --- | --- | --- | --- | --- | --- | --- | --- | --- | --- | --- | --- | --- | --- | --- |
| 1 | 1 | Início do Projeto | milestone, manual | 0d | 2025-01-01 | 2025-01-01 |  |  |  |  |  |  |  |  |
| 2 | 2 | **Etapa 1 - Criação** |  | 6.5d | 2025-01-01 | 2025-01-09 |  | 0d |  |  |  |  | 63.5h | 4,206.25 |
| 3 | 2.1 | Fazer Brainstorm de criação |  | 4h | 2025-01-01 | 2025-01-01 | 1 | 0d |  |  |  | Diretor [12.5%]; Igor Oliveira; Produtor; Roteirista | 12.5h | 393.75 |
| 4 | 2.2 | Criar Roteiro |  | 3d | 2025-01-01 | 2025-01-06 | 1, 3 | 0d |  |  |  | Roteirista; Diretor [12.5%] | 27h | 1,012.5 |
| 5 | 2.3 | Criar Storyboard |  | 2d | 2025-01-06 | 2025-01-08 | 4 | 0d |  |  |  | Designer; Desenhista [50%] | 24h | 2,800 |
| 6 | 2.4 | Término Etapa 1 | milestone | 0d | 2025-01-09 | 2025-01-09 | 5FS+1d | 0d |  |  |  |  |  |  |
| 7 | 3 | **Etapa 2 - Planejamento** |  | 14.5d | 2025-01-09 | 2025-01-29 |  | 0d |  |  |  |  | 399.2h | 24,495 |
| 8 | 3.1 | Criar Orçamento e Planejamento Financeiro |  | 2d | 2025-01-09 | 2025-01-13 | 6 | 0d |  |  |  | Diretor; Roteirista | 32h | 1,200 |
| 9 | 3.2 | Selecionar Casting |  | 4d | 2025-01-13 | 2025-01-17 | 8 | 0d |  |  |  | Diretor [30%]; Produtor | 33.6h | 810 |
| 10 | 3.3 | Selecionar Locações de Filmagem |  | 2d | 2025-01-13 | 2025-01-15 | 9SS | 0d |  |  |  | Produtor; Roteirista; Cenografista | 48h | 2,500 |
| 11 | 3.4 | Definir Equipamentos de Filmagem |  | 4h | 2025-01-15 | 2025-01-15 | 10 | 0d |  |  |  | Técnico de Filmagem; Produtor | 8h | 675 |
| 12 | 3.5 | Definir equipe de Filmagem |  | 8h | 2025-01-15 | 2025-01-16 | 11 | 0d |  |  |  | Diretor [50%]; Produtor; Roteirista; Figurinista | 16h | 475 |
| 13 | 3.6 | Definir Equipamentos de Iluminação |  | 4h | 2025-01-15 | 2025-01-15 | 10 | 0.5d | 0d |  |  | Técnico de Iluminação; Produtor | 8h | 675 |
| 14 | 3.7 | Definir Equipe de Iluminação |  | 4h | 2025-01-15 | 2025-01-16 | 13 | 0.5d |  |  |  | Técnico de Iluminação; Produtor; Diretor; Maquiador; Diretor de Fotografia | 20h | 975 |
| 15 | 3.8 | Definir Equipamentos de Audio |  | 4h | 2025-01-15 | 2025-01-15 | 10 | 0.5d | 0d |  |  | Técnico de Áudio; Produtor | 8h | 675 |
| 16 | 3.9 | Definir Equipe de Audio |  | 4h | 2025-01-15 | 2025-01-16 | 15 | 0.5d |  |  |  |  |  |  |
| 17 | 3.10 | Planejar Produção e Operação |  | 4d | 2025-01-16 | 2025-01-22 | 11, 13, 15, 12, 14, 16 | 0d |  | start no earlier than 2025-01-16 |  | Diretor [30%]; Produtor; Roteirista; Igor Oliveira; Diretor de Fotografia; Editor | 109.6h | 6,735 |
| 18 | 3.11 | Planejar Montagem de Cenários |  | 2d | 2025-01-22 | 2025-01-24 | 17 | 0d |  |  |  | Técnico de Áudio; Técnico de Filmagem; Técnico de Iluminação [50%]; Roteirista; Diretor de Fotografia | 44h | 3,700 |
| 19 | 3.12 | Planejar Figurino |  | 2d | 2025-01-22 | 2025-01-24 | 17 | 0d |  |  |  | Figurinista; Roteirista | 16h | 400 |
| 20 | 3.13 | Planejar Deslocamento das Equipes |  | 0.5d | 2025-01-16 | 2025-01-17 | 12, 14, 16 | 0d |  |  |  | Produtor | 4h | 75 |
| 21 | 3.14 | Definir Cronograma de Filmagens |  | 3d | 2025-01-24 | 2025-01-29 | 17, 18, 19 | 0d |  |  |  | Roteirista [50%]; Técnico de Filmagem [50%] | 20h | 2,100 |
| 22 | 3.15 | Definir Cronograma de Edição |  | 2d | 2025-01-24 | 2025-01-28 | 17, 18, 19 | 0d |  |  |  | Editor; Produtor | 32h | 3,500 |
| 23 | 3.16 | Término Etapa 2 | milestone | 0d | 2025-01-29 | 2025-01-29 | 21 | 0d |  |  |  |  |  |  |
| 24 | 4 | **Etapa 3 - Execução** |  | 23.47d | 2025-01-17 | 2025-02-24 |  | 0d |  |  |  |  | 1180h | 193,575 |
| 25 | 4.1 | Contratar Serviços e Equipes |  | 2d | 2025-01-17 | 2025-01-21 | 9 | 5.22d | 0d |  | 2025-01-28 | Produtor | 16h | 300 |
| 26 | 4.2 | Realizar Ajustes do Local |  | 1d | 2025-01-21 | 2025-01-22 | 25 | 5.22d | 0d |  |  | Técnico de Áudio; Técnico de Iluminação [50%]; Técnico de Filmagem; Operador de Som | 28h | 3,800 |
| 27 | 4.3 | Montar Cenário |  | 2d | 2025-01-22 | 2025-01-23 | 26 | 5.22d | 0d |  |  | Projeto Cenografia [0.1%]; Gerador [1 unid.]; Iluminador; Técnico de Áudio; Técnico de Filmagem; Técnico de Iluminação [50%]; Câmeras [5 unid.] | 52h | 17,750 |
| 28 | 4.4 | Montar Equipamentos de Filmagem |  | 4h | 2025-01-23 | 2025-01-23 | 27FF | 5.22d | 0d |  |  | Câmeras [5 unid.]; Cabos [120 m.]; Técnico de Filmagem | 4h | 3,900 |
| 29 | 4.5 | Montar Equipamentos de Audio |  | 4h | 2025-01-23 | 2025-01-23 | 27FF | 5.22d | 0d |  |  | Cabos [100 m.]; Microfones [4 unid.]; Mesa de Som [1 unid.]; Técnico de Áudio | 4h | 2,500 |
| 30 | 4.6 | Montar Equipamentos de Iluminação |  | 4h | 2025-01-23 | 2025-01-23 | 27FF | 5.22d | 0d |  |  | Mesa de Luz [1 unid.]; Spots de Luz [12 unid.]; Cabos [125 m.]; Técnico de Iluminação [200%] | 8h | 5,075 |
| 31 | 4.7 | Testar Equipamentos |  | 6h | 2025-01-23 | 2025-01-24 | 30, 28, 29 | 5.22d | 0d |  |  | Técnico de Áudio; Técnico de Iluminação | 12h | 1,800 |
| 32 | 4.8 | Realizar Ensaios |  | 3d | 2025-01-24 | 2025-01-29 | 31 | 5.22d |  |  |  | Artista 1 [50%]; Artista 2 [50%]; Artista 3 [50%]; Artista 4 [50%]; Roteirista [50%]; Cameraman [500%]; Produtor | 200h | 27,750 |
| 33 | 4.9 | Realizar Filmagens |  | 8d | 2025-02-06 | 2025-02-21 | 32 | 0d |  | must start on 2025-02-06 |  | Diretor; Produtor; Roteirista; Artista 1; Artista 2; Artista 3; Artista 4; Cameraman [500%]; Câmeras [5 unid.]; Cenografista | 832h | 125,900 |
| 34 | 4.10 | Desmontar Local |  | 1d | 2025-02-21 | 2025-02-24 | 33 | 0d |  |  |  | Técnico de Áudio; Técnico de Filmagem; Técnico de Iluminação | 24h | 3,600 |
| 35 | 4.11 | Limpar Local |  | 0.5d | 2025-02-24 | 2025-02-24 | 34 | 0d |  |  |  | Serviço de Limpeza [0.1%] |  | 1,200 |
| 36 | 4.12 | Término Etapa 3 | milestone | 0d | 2025-02-24 | 2025-02-24 | 35 | 0d |  |  |  |  |  |  |

Notes:
- 3: Objetivos: / * Definir conceito e ideia geral da campanha / * Definir ações / * Definir elenco / OBS: A cria�‹o da campanha deve se adequar a realidade de verba definida em reunião conjunta com a equipe de planejamento e cliente, vide documento "Briefing" em anexo.

| ID | WBS | Task | Type | Duration | Start | Finish | Predecessors | Total slack | Resources | Work | Cost |
| --- | --- | --- | --- | --- | --- | --- | --- | --- | --- | --- | --- |
| 37 | 5 | **Etapa 4 - Pós Produção** |  | 13.5d | 2025-02-24 | 2025-03-13 | 24 | 0d |  | 256h | 24,600 |
| 38 | 5.1 | Decupar Material |  | 1d | 2025-02-24 | 2025-02-25 |  | 0d | Técnico de Áudio; Técnico de Filmagem; Técnico de Iluminação; Operador de Som; Cameraman | 40h | 5,200 |
| 39 | 5.2 | Editar Vídeo |  | 5d | 2025-02-25 | 2025-03-04 | 38 | 0d | Diretor; Editor; Produtor | 120h | 10,250 |
| 40 | 5.3 | Inserir Efeitos Especiais |  | 5d | 2025-03-04 | 2025-03-11 | 39 | 0d | Animador (Efeitos Especiais); Produtor | 80h | 8,750 |
| 41 | 5.4 | Realizar Tratamento e Correções |  | 2d | 2025-03-11 | 2025-03-13 | 40 | 0d | Diretor de Fotografia | 16h | 400 |
| 42 | 5.5 | Renderizar |  | 4h | 2025-03-13 | 2025-03-13 | 41 | 0d |  |  |  |
| 43 | 5.6 | Entrega do Vídeo | milestone | 0d | 2025-03-13 | 2025-03-13 | 42 | 0d |  |  |  |
| 44 | 5.7 | Término do Projeto | milestone | 0d | 2025-03-13 | 2025-03-13 | 43 | 0d |  |  |  |
